# Lịch sách dành cho trẻ em

How a schedule from MS Project changed from version to version. A marks actual dates.

## Version 1 (saved 2025-09-22, file Advanced Tracking A_Start.mpp)

Note of the change: BaiTapTuan4

| ID | WBS | Task | Duration | Start | Finish | Predecessors | Total float | Constraint |
| --- | --- | --- | --- | --- | --- | --- | --- | --- |
| 1 | 1 | **Họp nhân viên biên tập** | 60.12d | 2012-04-09 08:00 | 2012-07-02 09:00 |  | 888.75d |  |
| 2 |  | Họp nhân viên biên tập 1 | 1h | 2012-04-09 08:00 | 2012-04-09 09:00 |  | 948.75d | start no earlier than 2012-04-09 08:00 |
| 3 |  | Họp nhân viên biên tập 2 | 1h | 2012-04-16 08:00 | 2012-04-16 09:00 |  | 943.75d | start no earlier than 2012-04-16 08:00 |
| 4 |  | Họp nhân viên biên tập 3 | 1h | 2012-04-23 08:00 | 2012-04-23 09:00 |  | 938.75d | start no earlier than 2012-04-23 08:00 |
| 5 |  | Họp nhân viên biên tập 4 | 1h | 2012-04-30 08:00 | 2012-04-30 09:00 |  | 933.75d | start no earlier than 2012-04-30 08:00 |
| 6 |  | Họp nhân viên biên tập 5 | 1h | 2012-05-07 08:00 | 2012-05-07 09:00 |  | 928.75d | start no earlier than 2012-05-07 08:00 |
| 7 |  | Họp nhân viên biên tập 6 | 1h | 2012-05-14 08:00 | 2012-05-14 09:00 |  | 923.75d | start no earlier than 2012-05-14 08:00 |
| 8 |  | Họp nhân viên biên tập 7 | 1h | 2012-05-21 08:00 | 2012-05-21 09:00 |  | 918.75d | start no earlier than 2012-05-21 08:00 |
| 9 |  | Họp nhân viên biên tập 8 | 1h | 2012-05-28 08:00 | 2012-05-28 09:00 |  | 913.75d | start no earlier than 2012-05-28 08:00 |
| 10 |  | Họp nhân viên biên tập 9 | 1h | 2012-06-04 08:00 | 2012-06-04 09:00 |  | 908.75d | start no earlier than 2012-06-04 08:00 |
| 11 |  | Họp nhân viên biên tập 10 | 1h | 2012-06-11 08:00 | 2012-06-11 09:00 |  | 903.75d | start no earlier than 2012-06-11 08:00 |
| 12 |  | Họp nhân viên biên tập 11 | 1h | 2012-06-18 08:00 | 2012-06-18 09:00 |  | 898.75d | start no earlier than 2012-06-18 08:00 |
| 13 |  | Họp nhân viên biên tập 12 | 1h | 2012-06-25 08:00 | 2012-06-25 09:00 |  | 893.75d | start no earlier than 2012-06-25 08:00 |
| 14 |  | Họp nhân viên biên tập 13 | 1h | 2012-07-02 08:00 | 2012-07-02 09:00 |  | 888.75d | start no earlier than 2012-07-02 08:00 |
| 15 | 2 | **Sự tiếp nhận** | 35.5d | 2015-04-06 08:00 | 2015-05-25 12:00 |  | 0d |  |
| 16 |  | Nhận bản thảo | 0d | 2015-04-06 08:00 | 2015-04-06 08:00 |  | 0d |  |
| 17 |  | Biên tập nội dung | 15d | 2015-04-06 08:00 | 2015-04-30 10:00 | 16 | 0d |  |
| 18 |  | Đánh giá tác phẩm gốc | 10.25d | 2015-04-23 10:00 | 2015-05-07 12:00 | 17FS-5d | 0d |  |
| 19 |  | Đánh giá của tác giả về nội dung biên tập | 12d | 2015-05-07 13:00 | 2015-05-25 12:00 | 17, 18 | 0d |  |
| 20 |  | Bàn giao cho bộ phận biên tập | 0d | 2015-05-25 12:00 | 2015-05-25 12:00 | 19 | 0d |  |
| 21 | 3 | **Biên tập** | 29.12d | 2015-05-25 13:00 | 2015-07-03 14:00 | 15 | 0d |  |
| 22 |  | Sắp xếp bản thảo cho bản sao | 5.12d | 2015-05-25 13:00 | 2015-06-01 14:00 |  | 0d |  |
| 23 |  | Bản sao | 11.25d | 2015-06-01 14:00 | 2015-06-16 16:00 | 22 | 0d |  |
| 24 |  | Đánh giá của tác giả về bản sao | 10d | 2015-06-16 16:00 | 2015-06-30 16:00 | 23 | 0d |  |
| 25 |  | Kết hợp bản sao | 5.12d | 2015-06-26 11:00 | 2015-07-03 14:00 | 24FS-2.5% | 0d |  |
| 26 |  | Bàn giao cho bộ phận sản xuất | 0d | 2015-07-03 14:00 | 2015-07-03 14:00 | 25 | 0d |  |
| 27 | 4 | **Thiết kế và sản xuất** | 58.25d | 2015-07-03 14:00 | 2015-09-23 16:00 | 21 | 0d |  |
| 28 |  | Thiết lập trang | 15d | 2015-07-03 14:00 | 2015-07-24 14:00 |  | 0d |  |
| 29 |  | Thiết kế minh họa nội dung | 15.25d | 2015-07-03 14:00 | 2015-07-24 16:00 | 28SS | 0d |  |
| 30 | 4.3 | **Đánh giá trang thứ nhất** | 30d | 2015-07-24 16:00 | 2015-09-04 16:00 | 29 | 0d |  |
| 31 |  | Hiệu đính và lập chỉ mục | 10d | 2015-07-24 16:00 | 2015-08-07 16:00 |  | 0d | start no earlier than 2015-07-17 08:00 |
| 32 |  | Incorporate 1st Pages review | 10d | 2015-08-07 16:00 | 2015-08-21 16:00 | 31 | 0d |  |
| 33 |  | Send proofed pages to Production | 0d | 2015-08-21 16:00 | 2015-08-21 16:00 | 32 | 0d |  |
| 34 |  | Enter page corrections and index | 5d | 2015-08-21 16:00 | 2015-08-28 16:00 | 33 | 0d |  |
| 35 |  | Cover design | 5d | 2015-08-28 16:00 | 2015-09-04 16:00 | 34 | 0d |  |
| 36 | 4.4 | **2nd Pages review** | 13d | 2015-09-04 16:00 | 2015-09-23 16:00 |  | 0d |  |
| 37 |  | Proof and review | 6.5d | 2015-09-04 16:00 | 2015-09-15 11:00 | 35 | 0d |  |
| 38 |  | Send proofed pages to Production | 0d | 2015-09-15 11:00 | 2015-09-15 11:00 | 37 | 0d |  |
| 39 |  | Final review | 5d | 2015-09-16 16:00 | 2015-09-23 16:00 | 38 | 0d |  |
| 40 | 4.5 | **Design book's companion website** | 10d | 2015-09-04 16:00 | 2015-09-18 16:00 | 30 | 3d |  |
| 41 |  | Create mockup | 4.5d | 2015-09-04 16:00 | 2015-09-16 16:00 |  | 3d |  |
| 42 |  | Review with author | 2d | 2015-09-16 16:00 | 2015-09-18 16:00 | 41 | 3d |  |
| 43 | 5 | **Color prep and printing** | 46d | 2015-09-23 16:00 | 2015-11-26 16:00 | 40 | 0d |  |
| 44 |  | Send to color house | 1d | 2015-09-23 16:00 | 2015-09-28 16:00 | 36 | 0d |  |
| 45 |  | Generate proofs | 10d | 2015-09-28 16:00 | 2015-10-12 16:00 | 44 | 0d |  |
| 46 |  | Print and ship | 30d | 2015-10-15 16:00 | 2015-11-26 16:00 | 45FS+3d | 0d |  |
| 47 | 6 | **Book launch prep** | 22d | 2015-09-28 16:00 | 2015-10-28 16:00 |  | 21d |  |
| 48 |  | Launch planning | 5d | 2015-09-28 16:00 | 2015-10-05 16:00 | 44 | 21d |  |
| 49 |  | Assign launch team members | 1d | 2015-10-05 16:00 | 2015-10-06 16:00 | 48 | 21d |  |
| 50 |  | Complete author questionnaire | 5d | 2015-10-06 16:00 | 2015-10-13 16:00 | 49 | 21d |  |
| 51 |  | Schedule author interviews | 1d | 2015-10-13 16:00 | 2015-10-14 16:00 | 50 | 21d |  |
| 52 |  | Design and order marketing material | 10d | 2015-10-14 16:00 | 2015-10-28 16:00 | 51 | 21d |  |

## Version 2 (saved 2025-09-22, file Advanced Tracking B_Start.mpp)

Note of the change: BaiTapTuan4

Last finish stays 2015-11-26. Complete tasks 0 → 4.

Changed:

| ID | Task | Start | Finish | Duration | Complete | Total float | Other |
| --- | --- | --- | --- | --- | --- | --- | --- |
| 1 | **Hợp nhân viên biên tập** | 2012-04-09 08:00 → 2012-04-23 08:00 A (+14d) | 2012-07-02 09:00 → 2015-04-20 09:00 (+1022d) | 60.12d → 780.12d | 0% → 15% | 888.75d → 158.75d | was named Họp nhân viên biên tập |
| 2 | Hợp nhân viên biên tập 1 | 2012-04-09 08:00 → 2015-04-13 08:00 A (+1099d) | 2012-04-09 09:00 → 2015-04-13 09:00 A (+1099d) |  | 0% → 100% | 948.75d → none | was named Họp nhân viên biên tập 1; constraint start no earlier than 2012-04-09 08:00 → start no earlier than 2015-04-13 08:00 |
| 3 | Hợp nhân viên biên tập 2 | 2012-04-16 08:00 → 2015-04-20 08:00 A (+1099d) | 2012-04-16 09:00 → 2015-04-20 09:00 A (+1099d) |  | 0% → 100% | 943.75d → none | was named Họp nhân viên biên tập 2; constraint start no earlier than 2012-04-16 08:00 → start no earlier than 2015-04-20 08:00 |
| 4 | Hợp nhân viên biên tập 3 |  |  |  |  |  | was named Họp nhân viên biên tập 3 |
| 5 | Hợp nhân viên biên tập 4 |  |  |  |  |  | was named Họp nhân viên biên tập 4 |
| 6 | Hợp nhân viên biên tập 5 |  |  |  |  |  | was named Họp nhân viên biên tập 5 |
| 7 | Hợp nhân viên biên tập 6 |  |  |  |  |  | was named Họp nhân viên biên tập 6 |
| 8 | Hợp nhân viên biên tập 7 |  |  |  |  |  | was named Họp nhân viên biên tập 7 |
| 9 | Hợp nhân viên biên tập 8 |  |  |  |  |  | was named Họp nhân viên biên tập 8 |
| 10 | Hợp nhân viên biên tập 9 |  |  |  |  |  | was named Họp nhân viên biên tập 9 |
| 11 | Hợp nhân viên biên tập 10 |  |  |  |  |  | was named Họp nhân viên biên tập 10 |
| 12 | Hợp nhân viên biên tập 11 |  |  |  |  |  | was named Họp nhân viên biên tập 11 |
| 13 | Hợp nhân viên biên tập 12 |  |  |  |  |  | was named Họp nhân viên biên tập 12 |
| 14 | Hợp nhân viên biên tập 13 |  |  |  |  |  | was named Họp nhân viên biên tập 13 |
| 15 | **Sự tiếp nhận** | 2015-04-06 08:00 A |  |  | 0% → 40% |  | baseline finish 2015-05-18 10:00 → 2015-05-25 12:00 |
| 16 | Nhận bản thảo | 2015-04-06 08:00 A | 2015-04-06 08:00 A |  | 0% → 100% | 0d → none |  |
| 17 | Biên tập nội dung | 2015-04-06 08:00 A | 2015-04-30 10:00 A |  | 0% → 100% | 0d → none |  |
| 18 | Đánh giá tác phẩm gốc |  |  |  |  |  | baseline start none → 2015-04-23 10:00; baseline finish none → 2015-05-07 12:00 |
| 19 | Đánh giá của tác giả về nội dung biên tập |  |  |  |  |  | baseline start 2015-04-30 10:00 → 2015-05-07 13:00; baseline finish 2015-05-18 10:00 → 2015-05-25 12:00 |
| 20 | Bàn giao cho bộ phận biên tập |  |  |  |  |  | baseline start 2015-05-18 10:00 → 2015-05-25 12:00; baseline finish 2015-05-18 10:00 → 2015-05-25 12:00 |
| 21 | **Biên tập** |  |  |  |  |  | baseline start 2015-05-18 10:00 → 2015-05-25 13:00; baseline finish 2015-06-26 11:00 → 2015-07-03 14:00 |
| 22 | Sắp xếp bản thảo cho bản sao |  |  |  |  |  | baseline start 2015-05-18 10:00 → 2015-05-25 13:00; baseline finish 2015-05-25 11:00 → 2015-06-01 14:00 |
| 23 | Bản sao |  |  |  |  |  | baseline start 2015-05-25 11:00 → 2015-06-01 14:00; baseline finish 2015-06-09 14:00 → 2015-06-16 16:00 |
| 24 | Đánh giá của tác giả về bản sao |  |  |  |  |  | baseline start 2015-06-09 14:00 → 2015-06-16 16:00; baseline finish 2015-06-23 14:00 → 2015-06-30 16:00 |
| 25 | Kết hợp bản sao |  |  |  |  |  | baseline start 2015-06-19 09:00 → 2015-06-26 11:00; baseline finish 2015-06-26 11:00 → 2015-07-03 14:00 |
| 26 | Bàn giao cho bộ phận sản xuất |  |  |  |  |  | baseline start 2015-06-26 11:00 → 2015-07-03 14:00; baseline finish 2015-06-26 11:00 → 2015-07-03 14:00 |
| 27 | **Thiết kế và sản xuất** |  |  |  |  |  | baseline start 2015-06-26 11:00 → 2015-07-03 14:00; baseline finish 2015-09-09 14:00 → 2015-09-23 16:00 |
| 28 | Thiết lập trang |  |  |  |  |  | baseline start 2015-06-26 11:00 → 2015-07-03 14:00; baseline finish 2015-07-17 11:00 → 2015-07-24 14:00 |
| 29 | Thiết kế nội dung minh họa |  |  |  |  |  | was named Thiết kế minh họa nội dung; baseline start 2015-06-26 11:00 → 2015-07-03 14:00; baseline finish 2015-07-17 14:00 → 2015-07-24 16:00 |
| 30 | **Đánh giá trang thứ nhất** |  |  |  |  |  | baseline start 2015-07-17 14:00 → 2015-07-24 16:00; baseline finish 2015-08-21 14:00 → 2015-09-04 16:00 |
| 31 | Hiệu đính vfa lập chỉ mục |  |  |  |  |  | was named Hiệu đính và lập chỉ mục; baseline start 2015-07-17 14:00 → 2015-07-24 16:00; baseline finish 2015-07-31 14:00 → 2015-08-07 16:00 |
| 32 | Incorporate 1st Pages review |  |  |  |  |  | baseline start 2015-07-31 14:00 → 2015-08-07 16:00; baseline finish 2015-08-07 14:00 → 2015-08-21 16:00 |
| 33 | Send proofed pages to Production |  |  |  |  |  | baseline start 2015-08-07 14:00 → 2015-08-21 16:00; baseline finish 2015-08-07 14:00 → 2015-08-21 16:00 |
| 34 | Enter page corrections and index |  |  |  |  |  | baseline start 2015-08-07 14:00 → 2015-08-21 16:00; baseline finish 2015-08-14 14:00 → 2015-08-28 16:00 |
| 35 | Cover design |  |  |  |  |  | baseline start 2015-08-14 14:00 → 2015-08-28 16:00; baseline finish 2015-08-21 14:00 → 2015-09-04 16:00 |
| 36 | **2nd Pages review** |  |  |  |  |  | baseline start 2015-08-21 14:00 → 2015-09-04 16:00; baseline finish 2015-09-09 14:00 → 2015-09-23 16:00 |
| 37 | Proof and review |  |  |  |  |  | baseline start 2015-08-21 14:00 → 2015-09-04 16:00; baseline finish 2015-09-01 09:00 → 2015-09-15 11:00 |
| 38 | Send proofed pages to Production |  |  |  |  |  | baseline start 2015-09-01 09:00 → 2015-09-15 11:00; baseline finish 2015-09-01 09:00 → 2015-09-15 11:00 |
| 39 | Final review |  |  |  |  |  | baseline start 2015-09-02 14:00 → 2015-09-16 16:00; baseline finish 2015-09-09 14:00 → 2015-09-23 16:00 |
| 40 | **Design book's companion website** |  |  |  |  |  | baseline start 2015-08-21 14:00 → 2015-09-04 16:00; baseline finish 2015-09-04 14:00 → 2015-09-18 16:00 |
| 41 | Create mockup |  |  |  |  |  | baseline start 2015-08-21 14:00 → 2015-09-04 16:00; baseline finish 2015-09-02 14:00 → 2015-09-16 16:00 |
| 42 | Review with author |  |  |  |  |  | baseline start 2015-09-02 14:00 → 2015-09-16 16:00; baseline finish 2015-09-04 14:00 → 2015-09-18 16:00 |
| 43 | **Color prep and printing** |  |  |  |  |  | baseline start 2015-09-09 14:00 → 2015-09-23 16:00; baseline finish 2015-11-12 14:00 → 2015-11-26 16:00 |
| 44 | Send to color house |  |  |  |  |  | baseline start 2015-09-09 14:00 → 2015-09-23 16:00; baseline finish 2015-09-14 14:00 → 2015-09-28 16:00 |
| 45 | Generate proofs |  |  |  |  |  | baseline start 2015-09-14 14:00 → 2015-09-28 16:00; baseline finish 2015-09-28 14:00 → 2015-10-12 16:00 |
| 46 | Print and ship |  |  |  |  |  | baseline start 2015-10-01 14:00 → 2015-10-15 16:00; baseline finish 2015-11-12 14:00 → 2015-11-26 16:00 |
| 47 | **Book launch prep** |  |  |  |  |  | baseline start 2015-09-04 14:00 → 2015-09-28 16:00; baseline finish 2015-10-02 14:00 → 2015-10-28 16:00 |
| 48 | Launch planning |  |  |  |  |  | baseline start 2015-09-04 14:00 → 2015-09-28 16:00; baseline finish 2015-09-16 14:00 → 2015-10-05 16:00 |
| 49 | Assign launch team members |  |  |  |  |  | baseline start 2015-09-16 14:00 → 2015-10-05 16:00; baseline finish 2015-09-17 14:00 → 2015-10-06 16:00 |
| 50 | Complete author questionnaire |  |  |  |  |  | baseline start 2015-09-17 14:00 → 2015-10-06 16:00; baseline finish 2015-09-24 14:00 → 2015-10-13 16:00 |
| 51 | Schedule author interviews |  |  |  |  |  | baseline start 2015-09-24 14:00 → 2015-10-13 16:00; baseline finish 2015-09-25 14:00 → 2015-10-14 16:00 |
| 52 | Design and order marketing material |  |  |  |  |  | baseline start 2015-09-25 14:00 → 2015-10-14 16:00; baseline finish 2015-10-02 14:00 → 2015-10-28 16:00 |

## Version 3 (saved 2025-09-22, file Advanced Tracking D_Start.mpp)

Note of the change: BaiTapTuan4

Last finish stays 2015-11-26. Complete tasks 4 → 18.

Changed:

| ID | Task | Start | Finish | Duration | Complete | Total float | Predecessors | Other |
| --- | --- | --- | --- | --- | --- | --- | --- | --- |
| 1 | **Họp nhân viên biên tập** | 2012-04-23 08:00 A → 2012-05-28 08:00 A (+35d) | 2015-04-20 09:00 → 2015-05-25 09:00 (+35d) |  | 15% → 54% | 158.75d → 133.88d |  | was named Hợp nhân viên biên tập |
| 2 | Họp nhân viên biên tập 1 |  |  |  |  |  |  | was named Hợp nhân viên biên tập 1 |
| 3 | Họp nhân viên biên tập 2 |  |  |  |  |  |  | was named Hợp nhân viên biên tập 2 |
| 4 | Họp nhân viên biên tập 3 | 2012-04-23 08:00 → 2015-04-27 08:00 A (+1099d) | 2012-04-23 09:00 → 2015-04-27 09:00 A (+1099d) |  | 0% → 100% | 938.75d → none |  | was named Hợp nhân viên biên tập 3; constraint start no earlier than 2012-04-23 08:00 → start no earlier than 2015-04-27 08:00 |
| 5 | Họp nhân viên biên tập 4 | 2012-04-30 08:00 → 2015-05-04 08:00 A (+1099d) | 2012-04-30 09:00 → 2015-05-04 09:00 A (+1099d) |  | 0% → 100% | 933.75d → none |  | was named Hợp nhân viên biên tập 4; constraint start no earlier than 2012-04-30 08:00 → start no earlier than 2015-05-04 08:00 |
| 6 | Họp nhân viên biên tập 5 | 2012-05-07 08:00 → 2015-05-11 08:00 A (+1099d) | 2012-05-07 09:00 → 2015-05-11 09:00 A (+1099d) |  | 0% → 100% | 928.75d → none |  | was named Hợp nhân viên biên tập 5; constraint start no earlier than 2012-05-07 08:00 → start no earlier than 2015-05-11 08:00 |
| 7 | Họp nhân viên biên tập 6 | 2012-05-14 08:00 → 2015-05-18 08:00 A (+1099d) | 2012-05-14 09:00 → 2015-05-18 09:00 A (+1099d) |  | 0% → 100% | 923.75d → none |  | was named Hợp nhân viên biên tập 6; constraint start no earlier than 2012-05-14 08:00 → start no earlier than 2015-05-18 08:00 |
| 8 | Họp nhân viên biên tập 7 | 2012-05-21 08:00 → 2015-05-25 08:00 A (+1099d) | 2012-05-21 09:00 → 2015-05-25 09:00 A (+1099d) |  | 0% → 100% | 918.75d → none |  | was named Hợp nhân viên biên tập 7; constraint start no earlier than 2012-05-21 08:00 → start no earlier than 2015-05-25 08:00 |
| 9 | Họp nhân viên biên tập 8 |  |  |  |  | 913.75d → 913.88d |  | was named Hợp nhân viên biên tập 8 |
| 10 | Họp nhân viên biên tập 9 |  |  |  |  | 908.75d → 908.88d |  | was named Hợp nhân viên biên tập 9 |
| 11 | Họp nhân viên biên tập 10 |  |  |  |  | 903.75d → 903.88d |  | was named Hợp nhân viên biên tập 10 |
| 12 | Họp nhân viên biên tập 11 |  |  |  |  | 898.75d → 898.88d |  | was named Hợp nhân viên biên tập 11 |
| 13 | Họp nhân viên biên tập 12 |  |  |  |  | 893.75d → 893.88d |  | was named Hợp nhân viên biên tập 12 |
| 14 | Họp nhân viên biên tập 13 |  |  |  |  | 888.75d → 888.88d |  | was named Hợp nhân viên biên tập 13 |
| 15 | **Sự tiếp nhận** |  | 2015-05-25 12:00 → 2015-05-26 17:00 A (+1d) | 35.5d → 37d | 40% → 100% | 0d → none |  |  |
| 16 | Manuscript received |  |  |  |  |  |  | was named Nhận bản thảo |
| 17 | Content edit |  |  |  |  |  |  | was named Biên tập nội dung |
| 18 | Original art review | 2015-04-23 10:00 A | 2015-05-07 12:00 A |  | 0% → 100% | 0d → none |  | was named Đánh giá tác phẩm gốc |
| 19 | Author review of content edit | 2015-05-07 13:00 A | 2015-05-25 12:00 → 2015-05-26 17:00 A (+1d) | 12d → 13.5d | 0% → 100% | 0d → none |  | was named Đánh giá của tác giả về nội dung biên tập |
| 20 | Handoff to Editorial | 2015-05-25 12:00 → 2015-05-26 17:00 A (+1d) | 2015-05-25 12:00 → 2015-05-26 17:00 A (+1d) |  | 0% → 100% | 0d → none |  | was named Bàn giao cho bộ phận biên tập |
| 21 | **Biên tập** | 2015-05-25 13:00 → 2015-05-27 08:00 A (+2d) | 2015-07-03 14:00 → 2015-07-06 11:12 A (+3d) | 29.12d → 28.4d | 0% → 100% | 0d → none |  |  |
| 22 | Sắp xếp bản thảo cho bản sao | 2015-05-25 13:00 → 2015-05-27 08:00 A (+2d) | 2015-06-01 14:00 → 2015-06-02 17:00 A (+1d) | 5.12d → 5d | 0% → 100% | 0d → none |  |  |
| 23 | Bản sao | 2015-06-01 14:00 → 2015-06-03 08:00 A (+2d) | 2015-06-16 16:00 → 2015-06-17 12:00 A (+1d) | 11.25d → 10.5d | 0% → 100% | 0d → none |  |  |
| 24 | Đánh giá của tác giả về bản sao | 2015-06-16 16:00 → 2015-06-17 13:00 A (+1d) | 2015-06-30 16:00 → 2015-07-01 14:36 A (+1d) | 10d → 10.2d | 0% → 100% | 0d → none |  |  |
| 25 | Kết hợp bản sao | 2015-06-26 11:00 → 2015-06-29 09:12 A (+3d) | 2015-07-03 14:00 → 2015-07-06 11:12 A (+3d) |  | 0% → 100% | 0d → none |  |  |
| 26 | Bàn giao cho bộ phận sản xuất | 2015-07-03 14:00 → 2015-07-06 11:12 A (+3d) | 2015-07-03 14:00 → 2015-07-06 11:12 A (+3d) |  | 0% → 100% | 0d → none |  |  |
| 27 | **Thiết kế và sản xuất** | 2015-07-03 14:00 → 2015-07-06 11:12 A (+3d) | 2015-09-23 16:00 → 2015-09-25 17:00 (+2d) | 58.25d → 59.6d | 0% → 30% |  |  |  |
| 28 | **Thiết lập trang** | 2015-07-03 14:00 → 2015-07-06 11:12 A (+3d) | 2015-07-24 14:00 → 2015-07-29 17:00 (+5d) | 15d → 17.6d | 0% → 99% |  |  |  |
| 29 | Thiết kế nội dung minh họa | 2015-07-03 14:00 → 2015-07-06 11:12 A (+3d) | 2015-07-24 16:00 → 2015-07-29 17:00 A (+5d) | 15.25d → 17.6d | 0% → 100% | 0d → none | 28SS → none |  |
| 30 | **Đánh giá trang thứ nhất** | 2015-07-24 16:00 → 2015-07-30 08:00 A (+6d) | 2015-09-04 16:00 → 2015-09-09 17:00 (+5d) |  | 0% → 7% |  |  |  |
| 31 | Proofread and index | 2015-07-24 16:00 → 2015-07-30 08:00 A (+6d) | 2015-08-07 16:00 → 2015-08-12 17:00 (+5d) |  | 0% → 20% |  |  | was named Hiệu đính vfa lập chỉ mục |
| 32 | Incorporate 1st Pages review | 2015-08-07 16:00 → 2015-08-13 08:00 (+6d) | 2015-08-21 16:00 → 2015-08-26 17:00 (+5d) |  |  |  |  |  |
| 33 | Send proofed pages to Production | 2015-08-21 16:00 → 2015-08-26 17:00 (+5d) | 2015-08-21 16:00 → 2015-08-26 17:00 (+5d) |  |  |  |  |  |
| 34 | Enter page corrections and index | 2015-08-21 16:00 → 2015-08-27 08:00 (+6d) | 2015-08-28 16:00 → 2015-09-02 17:00 (+5d) |  |  |  |  |  |
| 35 | Cover design | 2015-08-28 16:00 → 2015-09-03 08:00 (+6d) | 2015-09-04 16:00 → 2015-09-09 17:00 (+5d) |  |  |  |  |  |
| 36 | **2nd Pages review** | 2015-09-04 16:00 → 2015-09-10 08:00 (+6d) | 2015-09-23 16:00 → 2015-09-25 17:00 (+2d) | 13d → 12d |  |  |  |  |
| 37 | Proof and review | 2015-09-04 16:00 → 2015-09-10 08:00 (+6d) | 2015-09-15 11:00 → 2015-09-18 12:00 (+3d) |  |  |  |  |  |
| 38 | Send proofed pages to Production | 2015-09-15 11:00 → 2015-09-18 12:00 (+3d) | 2015-09-15 11:00 → 2015-09-18 12:00 (+3d) |  |  |  |  |  |
| 39 | Final review | 2015-09-16 16:00 → 2015-09-21 08:00 (+5d) | 2015-09-23 16:00 → 2015-09-25 17:00 (+2d) |  |  |  |  |  |
| 40 | **Design book's companion website** | 2015-09-04 16:00 → 2015-09-10 08:00 (+6d) | 2015-09-18 16:00 → 2015-09-23 17:00 (+5d) |  |  | 3d → 2d |  |  |
| 41 | Create mockup | 2015-09-04 16:00 → 2015-09-10 08:00 (+6d) | 2015-09-16 16:00 → 2015-09-21 17:00 (+5d) |  |  | 3d → 2d |  |  |
| 42 | Review with author | 2015-09-16 16:00 → 2015-09-22 08:00 (+6d) | 2015-09-18 16:00 → 2015-09-23 17:00 (+5d) |  |  | 3d → 2d |  |  |
| 43 | **Color prep and printing** | 2015-09-23 16:00 → 2015-09-28 08:00 (+5d) | 2015-11-26 16:00 → 2015-11-26 17:00 | 46d → 44d |  |  |  |  |
| 44 | Send to color house | 2015-09-23 16:00 → 2015-09-28 08:00 (+5d) | 2015-09-28 16:00 → 2015-09-28 17:00 |  |  |  |  |  |
| 45 | Generate proofs | 2015-09-28 16:00 → 2015-09-29 08:00 (+1d) | 2015-10-12 16:00 → 2015-10-12 17:00 |  |  |  |  |  |
| 46 | Print and ship | 2015-10-15 16:00 → 2015-10-16 08:00 (+1d) | 2015-11-26 16:00 → 2015-11-26 17:00 |  |  |  |  |  |
| 47 | **Book launch prep** | 2015-09-28 16:00 → 2015-09-29 08:00 (+1d) | 2015-10-28 16:00 → 2015-10-28 17:00 |  |  |  |  |  |
| 48 | Launch planning | 2015-09-28 16:00 → 2015-09-29 08:00 (+1d) | 2015-10-05 16:00 → 2015-10-05 17:00 |  |  |  |  |  |
| 49 | Assign launch team members | 2015-10-05 16:00 → 2015-10-06 08:00 (+1d) | 2015-10-06 16:00 → 2015-10-06 17:00 |  |  |  |  |  |
| 50 | Complete author questionnaire | 2015-10-06 16:00 → 2015-10-07 08:00 (+1d) | 2015-10-13 16:00 → 2015-10-13 17:00 |  |  |  |  |  |
| 51 | Schedule author interviews | 2015-10-13 16:00 → 2015-10-14 08:00 (+1d) | 2015-10-14 16:00 → 2015-10-14 17:00 |  |  |  |  |  |
| 52 | Design and order marketing material | 2015-10-14 16:00 → 2015-10-15 08:00 (+1d) | 2015-10-28 16:00 → 2015-10-28 17:00 |  |  |  |  |  |

## Version 4 (saved 2025-09-26, file Advanced Tracking C_Start.mpp)

Note of the change: BaiTapTuan4

Last finish stays 2015-11-26. Complete tasks 18 → 12.

Changed:

| ID | Task | Start | Finish | Duration | Complete | Total float | Predecessors | Other |
| --- | --- | --- | --- | --- | --- | --- | --- | --- |
| 16 | Nhận bản thảo |  |  |  |  |  |  | was named Manuscript received |
| 17 | Biên tập nội dung |  |  |  |  |  |  | was named Content edit |
| 18 | Đánh giá tác phẩm gốc |  |  |  |  |  |  | was named Original art review |
| 19 | Đánh giá của tác giả về nội dung biên tập |  |  |  |  |  |  | was named Author review of content edit |
| 20 | Bàn giao cho bôj phận biên tập |  |  |  |  |  |  | was named Handoff to Editorial |
| 21 | **Biên tập** |  | 2015-07-06 11:12 A → 2015-07-07 15:00 (+1d) | 28.4d → 29.75d | 100% → 2% | none → 0d |  |  |
| 22 | Sắp xếp bản thảo cho bản sao |  | 2015-06-02 17:00 A → 2015-06-02 17:00 |  | 100% → 15% | none → 0d |  |  |
| 23 | Bản sao | 2015-06-03 08:00 A → 2015-06-03 08:00 | 2015-06-17 12:00 A → 2015-06-18 17:00 (+1d) | 10.5d → 12d | 100% → 0% | none → 0d |  |  |
| 24 | Đánh giá của tác giả về bản sao | 2015-06-17 13:00 A → 2015-06-19 08:00 (+2d) | 2015-07-01 14:36 A → 2015-07-02 17:00 (+1d) | 10.2d → 10d | 100% → 0% | none → 0d |  |  |
| 25 | Kết hợp bản sao | 2015-06-29 09:12 A → 2015-06-30 13:00 (+1d) | 2015-07-06 11:12 A → 2015-07-07 15:00 (+1d) |  | 100% → 0% | none → 0d |  |  |
| 26 | Bàn giao cho bộ phận sản xuất | 2015-07-06 11:12 A → 2015-07-07 15:00 (+1d) | 2015-07-06 11:12 A → 2015-07-07 15:00 (+1d) |  | 100% → 0% | none → 0d |  |  |
| 27 | **Thiết kế và sản xuất** | 2015-07-06 11:12 A → 2015-07-07 15:00 (+1d) |  | 59.6d → 58.25d | 30% → 0% |  |  |  |
| 28 | Thiết lập trang | 2015-07-06 11:12 A → 2015-07-07 15:00 (+1d) | 2015-07-29 17:00 → 2015-07-28 15:00 (-1d) | 17.6d → 15d | 99% → 0% |  |  |  |
| 29 | Thiết kế nội dung minh họa | 2015-07-06 11:12 A → 2015-07-07 15:00 (+1d) | 2015-07-29 17:00 A → 2015-07-28 17:00 (-1d) | 17.6d → 15.25d | 100% → 0% | none → 0d | none → 28SS |  |
| 30 | **Đánh giá trang thứ nhất** | 2015-07-30 08:00 A → 2015-07-29 08:00 (-1d) | 2015-09-09 17:00 → 2015-09-08 17:00 (-1d) |  | 7% → 0% |  |  |  |
| 31 | Proofread and index | 2015-07-30 08:00 A → 2015-07-29 08:00 (-1d) | 2015-08-12 17:00 → 2015-08-11 17:00 (-1d) |  | 20% → 0% |  |  |  |
| 32 | Incorporate 1st Pages review | 2015-08-13 08:00 → 2015-08-12 08:00 (-1d) | 2015-08-26 17:00 → 2015-08-25 17:00 (-1d) |  |  |  |  |  |
| 33 | Send proofed pages to Production | 2015-08-26 17:00 → 2015-08-25 17:00 (-1d) | 2015-08-26 17:00 → 2015-08-25 17:00 (-1d) |  |  |  |  |  |
| 34 | Enter page corrections and index | 2015-08-27 08:00 → 2015-08-26 08:00 (-1d) | 2015-09-02 17:00 → 2015-09-01 17:00 (-1d) |  |  |  |  |  |
| 35 | Cover design | 2015-09-03 08:00 → 2015-09-02 08:00 (-1d) | 2015-09-09 17:00 → 2015-09-08 17:00 (-1d) |  |  |  |  |  |
| 36 | **2nd Pages review** | 2015-09-10 08:00 → 2015-09-09 08:00 (-1d) |  | 12d → 13d |  |  |  |  |
| 37 | Proof and review | 2015-09-10 08:00 → 2015-09-09 08:00 (-1d) | 2015-09-18 12:00 → 2015-09-17 12:00 (-1d) |  |  |  |  |  |
| 38 | Send proofed pages to Production | 2015-09-18 12:00 → 2015-09-17 12:00 (-1d) | 2015-09-18 12:00 → 2015-09-17 12:00 (-1d) |  |  |  |  |  |
| 40 | **Design book's companion website** | 2015-09-10 08:00 → 2015-09-09 08:00 (-1d) | 2015-09-23 17:00 → 2015-09-22 17:00 (-1d) |  |  | 2d → 3d |  |  |
| 41 | Create mockup | 2015-09-10 08:00 → 2015-09-09 08:00 (-1d) | 2015-09-21 17:00 → 2015-09-18 17:00 (-3d) |  |  | 2d → 3d |  |  |
| 42 | Review with author | 2015-09-22 08:00 → 2015-09-21 08:00 (-1d) | 2015-09-23 17:00 → 2015-09-22 17:00 (-1d) |  |  | 2d → 3d |  |  |
